# Seguimiento G1 - EDGAR ARTEAGA

How a schedule from MS Project changed from version to version. A marks actual dates.

## Version 1 (saved 2017-04-26)

Note of the change: primer commit

| ID | WBS | Task | Duration | Start | Finish | Complete | Total float |
| --- | --- | --- | --- | --- | --- | --- | --- |
| 1 | 1 | **EDGAR ARTEAGA** | 680d? | 2015-02-27 A | 2017-10-05 | 94% | 0d |
| 2 | 1.1 | **TRANSITOS** | 291d? | 2016-03-15 A | 2017-04-25 A | 100% |  |
| 3 | 1.1.1 | **Variables de Riesgo** | 93d | 2016-05-23 A | 2016-09-28 A | 100% |  |
| 4 |  | Desarrollo | 12d | 2016-05-23 A | 2016-06-07 A | 100% |  |
| 5 |  | Control Calidad | 8d | 2016-06-07 A | 2016-06-16 A | 100% |  |
| 6 |  | Control Funcional | 79d | 2016-06-09 A | 2016-09-27 A | 100% |  |
| 7 |  | Puesta Producción | 1d | 2016-09-28 A | 2016-09-28 A | 100% |  |
| 8 | 1.1.1.5 | **Nuevo Requerimiento** | 23d | 2016-05-31 | 2016-06-30 | 100% |  |
| 9 |  | Control de calidad | 1d | 2016-06-06 A | 2016-06-06 A | 100% |  |
| 10 | 1.1.2 | **Tipo de Documento Organismos Internacionales** | 1d | 2016-03-15 A | 2016-03-15 A | 100% |  |
| 11 |  | Desarrollo | 1d | 2016-03-15 A | 2016-03-15 A | 100% |  |
| 12 |  | Control Calidad | 1d | 2016-03-15 A | 2016-03-15 A | 100% |  |
| 13 |  | Control Funcional | 1d | 2016-03-15 A | 2016-03-15 A | 100% |  |
| 14 |  | Puesta Producción | 1d | 2016-03-15 A | 2016-03-15 A | 100% |  |
| 15 | 1.1.3 | **Autorizaciones Previas Enmienda** | 134d | 2016-08-19 A | 2017-02-22 A | 100% |  |
| 16 |  | Requerimiento Modificacion | 11d | 2016-08-19 A | 2016-09-02 A | 100% |  |
| 17 |  | Control de calidad | 2d | 2016-09-06 A | 2016-09-07 A | 100% |  |
| 18 |  | Control Funcional | 122d | 2016-09-06 A | 2017-02-22 A | 100% |  |
| 19 | 1.1.4 | **Autorizaciones Previas Enmienda Modificado** | 45d? | 2017-02-22 A | 2017-04-25 A | 100% |  |
| 20 |  | Requerimiento Modificacion | 11d | 2017-02-22 A | 2017-03-08 A | 100% |  |
| 21 |  | Control de calidad | 12d | 2017-03-07 A | 2017-03-22 A | 100% |  |
| 22 |  | Control Funcional | 27d | 2017-03-07 A | 2017-04-12 A | 100% |  |
| 23 |  | Puesta Producción | 1d | 2017-04-25 A | 2017-04-25 A | 100% |  |
| 24 | 1.1.5 | **Proceso Abreviado** | 82d | 2016-07-05 A | 2016-10-26 A | 100% |  |
| 25 |  | Desarrollo | 5d | 2016-07-05 A | 2016-07-11 A | 100% |  |
| 26 |  | Control de calidad | 11d | 2016-07-11 A | 2016-07-25 A | 100% |  |
| 27 |  | Control Funcional | 77d | 2016-07-11 A | 2016-10-25 A | 100% |  |
| 28 |  | Puesta Producción | 1d | 2016-10-26 A | 2016-10-26 A | 100% |  |
| 29 | 1.1.6 | **Proceso Abreviado 2da Parte** | 78d | 2016-07-11 A | 2016-10-26 A | 100% |  |
| 30 |  | Desarrollo | 0d | 2016-07-19 A | 2016-07-19 A | 100% |  |
| 31 |  | Control de calidad | 11d | 2016-07-11 A | 2016-07-25 A | 100% |  |
| 32 |  | Control Funcional | 77d | 2016-07-11 A | 2016-10-25 A | 100% |  |
| 33 |  | Puesta Producción | 1d | 2016-10-26 A | 2016-10-26 A | 100% |  |
| 34 | 1.1.7 | **Modificacion Control 2752** | 2d | 2016-09-12 A | 2016-09-13 A | 100% |  |
| 35 |  | Desarrollo | 1d | 2016-09-12 A | 2016-09-12 A | 100% |  |
| 36 |  | Control de calidad | 2d | 2016-09-12 A | 2016-09-13 A | 100% |  |
| 37 |  | Control Funcional | 2d | 2016-09-12 A | 2016-09-13 A | 100% |  |
| 38 |  | Puesta en Produccion | 1d | 2016-09-13 A | 2016-09-13 A | 100% |  |
| 39 | 1.1.8 | **Registro de justificaciones de Transitos Fuera de Plazo** | 56d | 2016-10-24 A | 2017-01-09 A | 100% |  |
| 40 |  | Desarrollo | 25d | 2016-10-24 A | 2016-11-25 A | 100% |  |
| 41 |  | Control de calidad | 6d | 2016-12-06 A | 2016-12-13 A | 100% |  |
| 42 |  | Control Funcional | 13d | 2016-12-14 A | 2016-12-30 A | 100% |  |
| 43 |  | Puesta en Produccion | 1d | 2017-01-09 A | 2017-01-09 A | 100% |  |
| 44 | 1.2 | **FISAP** | 680d | 2015-02-27 A | 2017-10-05 | 91% | 0d |
| 45 | 1.2.1 | **Generacion Orden** | 144d | 2015-08-03 | 2016-02-18 A | 100% |  |
| 46 |  | Desarrollo | 8d | 2015-02-27 A | 2015-03-10 A | 100% |  |
| 47 |  | Control Calidad | 53d | 2015-03-10 A | 2015-05-21 A | 100% |  |
| 48 |  | Control Funcional | 212d | 2015-03-10 A | 2015-12-30 A | 100% |  |
| 49 | 1.2.2 | **Documentos generados de la Orden posterior** | 74d | 2016-08-02 A | 2016-11-11 A | 100% |  |
| 50 |  | Elaboracion de Requerimientos | 29d | 2016-08-02 A | 2016-09-09 A | 100% |  |
| 51 |  | Desarrollo | 45d | 2016-09-12 A | 2016-11-11 A | 100% |  |
| 52 | 1.2.3 | **Generacion de la Orden de Fiscalizacion Reformulado** | 122d | 2016-08-02 | 2017-01-18 A | 100% |  |
| 53 |  | Desarrollo | 7d | 2017-01-02 A | 2017-01-10 A | 100% |  |
| 54 |  | Control Calidad | 8d | 2017-01-05 A | 2017-01-16 A | 100% |  |
| 55 |  | Control Funcional | 7d | 2017-01-09 A | 2017-01-17 A | 100% |  |
| 56 |  | Puesta Producción | 1d | 2017-01-18 A | 2017-01-18 A | 100% |  |
| 57 | 1.2.4 | **Seguimiento y Conclusion de la Orden** | 162d | 2016-08-02 | 2017-03-15 | 99% |  |
| 58 |  | Desarrollo | 15d | 2017-01-10 A | 2017-01-30 A | 100% |  |
| 59 |  | Control Calidad | 13d | 2017-01-30 A | 2017-02-15 A | 100% |  |
| 60 |  | Control Funcional | 33d | 2017-01-30 A | 2017-03-15 A | 100% |  |
| 61 | 1.2.5 | **Proceso de Migración de las órdenes del SICODIF de la Gestión 2017** | 135d | 2016-08-02 A | 2017-02-06 | 75% |  |
| 62 |  | Desarrollo | 6d | 2017-01-30 A | 2017-02-06 A | 100% |  |
| 63 |  | Control Funcional | 1d | 2017-02-06 | 2017-02-06 |  |  |
| 64 |  | Puesta Producción | 1d | 2016-08-02 | 2016-08-02 |  |  |
| 65 | 1.2.6 | **Reportes de Resultados de la Orden (Cuadro de Liquidacion y Resumen de Tributos Omitidos)** | 186d | 2016-08-02 | 2017-04-18 | 99% |  |
| 66 |  | Desarrollo | 32d | 2017-01-06 A | 2017-02-20 A | 100% |  |
| 67 |  | Control Calidad | 40d | 2017-02-22 A | 2017-04-18 A | 100% |  |
| 68 |  | Control Funcional | 18d | 2017-02-20 A | 2017-03-15 A | 100% |  |
| 69 | 1.2.7 | **Modificacion a las opciones de Seguimiento y Conclusion de la Orden** | 147d | 2017-03-15 A | 2017-10-05 | 80% |  |
| 70 |  | Desarrollo | 12d | 2017-03-15 A | 2017-03-30 A | 100% |  |

| ID | WBS | Task | Duration | Start | Finish | Complete | Total float |
| --- | --- | --- | --- | --- | --- | --- | --- |
| 71 |  | Control Calidad | 1d | 2017-03-15 | 2017-03-15 |  |  |
| 72 |  | Control Funcional | 1d | 2017-03-30 | 2017-03-30 |  |  |
| 73 |  | Puesta Producción | 1d | 2017-03-15 | 2017-03-15 |  |  |
| 74 | 1.2.8 | **Reportes de explotación de información del sistema de fiscalización** | 147d | 2017-03-15 | 2017-10-05 |  |  |
| 75 |  | Desarrollo | 43d | 2017-03-15 | 2017-05-12 |  |  |
| 76 |  | Control Calidad | 1d | 2017-03-15 | 2017-03-15 |  |  |
| 77 |  | Control Funcional | 1d | 2017-03-15 | 2017-03-15 |  |  |
| 78 |  | Puesta Producción | 1d | 2017-03-15 | 2017-03-15 |  |  |
| 79 | 1.3 | **ACTIVOS FIJOS** | 183d | 2016-08-31 A | 2017-05-12 | 76% |  |
| 80 | 1.3.1 | **Modificacion de Opciones** | 123d | 2016-08-31 A | 2017-02-17 A | 100% |  |
| 81 |  | Desarrollo | 12d | 2016-08-31 A | 2016-09-15 A | 100% |  |
| 82 |  | Control Calidad | 6d | 2016-09-16 A | 2016-09-23 A | 100% |  |
| 83 |  | Control Funcional | 106d | 2016-09-16 A | 2017-02-10 A | 100% |  |
| 84 |  | Puesta Producción | 1d | 2017-02-17 A | 2017-02-17 A | 100% |  |
| 85 | 1.3.2 | **Modificacion de Opciones y Creacion de Reportes** | 37d | 2017-03-23 A | 2017-05-12 |  |  |
| 86 |  | Desarrollo | 37d | 2017-03-23 | 2017-05-12 |  |  |
| 87 |  | Control Calidad | 1d | 2017-03-23 | 2017-03-23 |  |  |
| 88 |  | Control Funcional | 1d | 2017-03-23 | 2017-03-23 |  |  |
| 89 |  | Puesta Producción | 1d | 2017-03-23 | 2017-03-23 |  |  |
| 90 | 1.4 | **SICODIF** | 261d | 2016-04-11 A | 2017-04-10 A | 100% |  |
| 91 | 1.4.1 | **Habilitacion de la GNF en el SICODIF** | 13d | 2016-10-14 A | 2016-11-01 A | 100% |  |
| 92 |  | Desarrollo | 1d | 2016-10-14 A | 2016-10-14 A | 100% |  |
| 93 |  | Control Calidad | 3d | 2016-10-14 A | 2016-10-18 A | 100% |  |
| 94 |  | Control Funcional | 7d | 2016-10-14 A | 2016-10-24 A | 100% |  |
| 95 |  | Puesta Producción | 1d | 2016-11-01 A | 2016-11-01 A | 100% |  |
| 96 | 1.4.2 | **Reporte Concesionarios** | 25d | 2016-09-28 A | 2016-11-01 A | 100% |  |
| 97 |  | Desarrollo | 13d | 2016-09-28 A | 2016-10-14 A | 100% |  |
| 98 |  | Control Calidad | 3d | 2016-10-14 A | 2016-10-18 A | 100% |  |
| 99 |  | Control Funcional | 7d | 2016-10-14 A | 2016-10-24 A | 100% |  |
| 100 |  | Puesta Producción | 1d | 2016-11-01 A | 2016-11-01 A | 100% |  |
| 101 | 1.4.3 | **Validacion para control de Recibos de Pago** | 12d | 2016-10-17 A | 2016-11-01 A | 100% |  |
| 102 |  | Desarrollo | 1d | 2016-10-17 A | 2016-10-17 A | 100% |  |
| 103 |  | Control Calidad | 10d | 2016-10-17 A | 2016-10-28 A | 100% |  |
| 104 |  | Puesta Producción | 1d | 2016-11-01 A | 2016-11-01 A | 100% |  |
| 105 | 1.4.4 | **Adecuaciones Solicitadas al SICODIF por el GNF-DIA** | 261d | 2016-04-11 A | 2017-04-10 A | 100% |  |
| 106 |  | Desarrollo | 34d | 2017-01-17 A | 2017-03-03 A | 100% |  |
| 107 |  | Control Calidad | 26d | 2017-03-06 A | 2017-04-10 A | 100% |  |
| 108 |  | Control Funcional | 16d | 2017-03-06 A | 2017-03-27 A | 100% |  |
| 109 |  | Puesta Producción | 1d | 2016-04-11 A | 2016-04-11 A | 100% |  |
| 110 | 1.5 | **ANBFLOW** | 145d | 2016-09-16 A | 2017-04-06 A | 100% |  |
| 111 | 1.5.1 | **Adecuaciones Solicitadas por DAS** | 129d | 2016-09-16 A | 2017-03-15 | 100% |  |
| 112 |  | Desarrollo | 2d | 2016-09-16 A | 2016-09-19 A | 100% |  |
| 113 |  | Puesta Producción | 1d | 2016-09-19 A | 2016-09-19 A | 100% |  |
| 114 | 1.5.2 | **Habilitación del Tipo de Prioridad "OEA"** | 24d | 2017-02-08 A | 2017-03-13 A | 100% |  |
| 115 |  | Desarrollo | 8d | 2017-02-08 A | 2017-02-17 A | 100% |  |
| 116 |  | Control Calidad | 1d | 2017-02-17 A | 2017-02-17 A | 100% |  |
| 117 |  | Control Funcional | 12d | 2017-02-17 A | 2017-03-06 A | 100% |  |
| 118 |  | Puesta Producción | 6d | 2017-03-06 A | 2017-03-13 A | 100% |  |
| 119 | 1.5.3 | **Agregar validación para que no se puedan devolver tramites a usuarios deshabilitados** | 21d | 2017-03-09 A | 2017-04-06 A | 100% |  |
| 120 |  | Desarrollo | 5d | 2017-03-09 A | 2017-03-15 A | 100% |  |
| 121 |  | Control Calidad | 4d | 2017-03-14 A | 2017-03-17 A | 100% |  |
| 122 |  | Control Funcional | 11d | 2017-03-14 A | 2017-03-28 A | 100% |  |
| 123 |  | Puesta Producción | 1d | 2017-04-06 A | 2017-04-06 A | 100% |  |
| 124 | 1.6 | **SIGEPLASE** | 4d | 2016-08-26 A | 2016-08-31 A | 100% |  |
| 125 | 1.6.1 | **Colaboración para implementación** | 4d | 2016-08-26 A | 2016-08-31 A | 100% |  |
| 126 |  | Reunión de Configuración de Usuarios | 1d | 2016-08-26 A | 2016-08-26 A | 100% |  |
| 127 |  | Reunión de Descripción de Tablas | 1d | 2016-08-31 A | 2016-08-31 A | 100% |  |
| 130 | 1.7 | **DIGITALIZACION** | 13d | 2017-02-15 A | 2017-03-03 | 88% | 0d |
| 131 | 1.7.1 | **Adicion de reporte por fecha de proceso** | 13d | 2017-02-15 A | 2017-03-03 | 88% | 0d |
| 132 |  | Desarrollo | 11d | 2017-02-15 A | 2017-03-01 A | 100% |  |
| 133 |  | Control Calidad | 3d | 2017-03-01 A | 2017-03-03 A | 100% |  |
| 134 |  | Control Funcional | 1d | 2017-03-01 | 2017-03-01 |  |  |
| 135 |  | Puesta Producción | 1d | 2017-02-15 | 2017-02-15 |  |  |

## Version 2 (saved 2017-05-16)

Note of the change: segumiento project

Last finish stays 2017-10-05.

Added:

| ID | Task | Duration | Start | Finish |
| --- | --- | --- | --- | --- |
| 75 | Definicion de los requerimientos | 1d? | 2017-03-15 | 2017-03-15 |
| 87 | Analisis de requerimiento | 1d? | 2017-03-23 | 2017-03-23 |
| 138 | **SICOPEA** | 1d | 2017-05-05 A | 2017-05-05 |
| 139 | **Creacion formulario acreditados Ley 617** | 1d | 2017-05-05 A | 2017-05-05 |
| 140 | Desarrollo | 11d | 2017-05-05 | 2017-05-19 |
| 141 | Control Calidad | 1d | 2017-05-05 | 2017-05-05 |
| 142 | Control Funcional | 1d | 2017-05-05 | 2017-05-05 |
| 143 | Puesta Producción | 1d | 2017-05-05 | 2017-05-05 |
| 144 | **Actualizacion via web service de la informacion de acreditados** | 1d | 2017-05-05 A | 2017-05-05 |
| 145 | Analisis de requerimiento | 12d | 2017-05-05 | 2017-05-22 |
| 146 | Desarrollo | 1d | 2017-05-05 | 2017-05-05 |
| 147 | Control Calidad | 1d | 2017-05-05 | 2017-05-05 |
| 148 | Control Funcional | 1d | 2017-05-05 | 2017-05-05 |
| 149 | Puesta Producción | 1d | 2017-05-05 | 2017-05-05 |

Changed:

| ID | Task | Start | Finish | Duration | Complete |
| --- | --- | --- | --- | --- | --- |
| 1 | **EDGAR ARTEAGA** |  |  |  | 94% → 92% |
| 44 | **FISAP** |  |  |  | 91% → 87% |
| 69 | **Modificacion a las opciones de Seguimiento y Conclusion de la Orden** | 2017-03-15 A → 2017-03-15 | 2017-10-05 → 2017-05-05 (-153d) | 147d → 38d | 80% → 14% |
| 71 | Control Calidad | 2017-03-15 → 2017-01-30 (-44d) | 2017-03-15 → 2017-05-05 (+51d) | 1d → 70d |  |
| 76 | Desarrollo |  | 2017-05-12 → 2017-03-15 (-58d) | 43d → 1d |  |
| 80 | **ACTIVOS FIJOS** |  |  |  | 76% → 96% |
| 88 | Desarrollo |  | 2017-05-12 → 2017-03-23 (-50d) | 37d → 1d |  |
